# shedule_Revision2stair-Final.xml

Schedule from MS Project XML, 2019-01-07 to 2022-11-25, status date 2019-01-07.
Bentley Systems, Incorporated

## Calendars

- Standard: Mon-Sun 08:00-16:00.

## Schedule

| ID | WBS | Task | Duration | Start | Finish | Predecessors | Total slack | Work |
| --- | --- | --- | --- | --- | --- | --- | --- | --- |
| 1 | 1 | **Temporary work** | 49d | 2019-01-07 | 2019-02-24 |  | 0d |  |
| 2 | 1.1 | Groundbreaking Ceremony | 3d | 2019-01-07 | 2019-01-09 |  | 0d |  |
| 3 | 1.2 | land grading & temporary barriers and enclosures | 32d | 2019-01-24 | 2019-02-24 | 2FS+14d | 0d |  |
| 4 | 1.3 | Install Temp Service (water&electric) | 7d | 2019-01-25 | 2019-01-31 | 3SS+1d | 0d |  |
| 5 | 1.4 | car washer & waste water runoff | 7d | 2019-01-26 | 2019-02-01 | 4SS+1d | 0d |  |
| 6 | 1.5 | Install Office | 19d | 2019-01-31 | 2019-02-18 | 4SS+6d | 0d |  |
| 7 | 2 | **Foundation** | 192d | 2019-02-25 | 2019-09-04 |  | 0d |  |
| 8 | 2.1 | **diaphragm wall** | 100d | 2019-02-25 | 2019-06-04 |  | 0d | 800h |
| 9 | 2.1.1 | pipe embedment confirmation & deliver the soil to dumping site | 1d | 2019-03-24 | 2019-03-24 | 12 | 0d |  |
| 10 | 2.1.2 | diaphragm wall | 36d | 2019-04-24 | 2019-05-29 | 12FS+31d | 0d | 288h |
| 11 | 2.1.3 | Chemical Churning Pile | 11d | 2019-05-25 | 2019-06-04 | 10FS-5d | 0d |  |
| 12 | 2.1.4 | guide ditch & pavement & spoil pit & sedimentation tank | 27d | 2019-02-25 | 2019-03-23 | 3 | 0d |  |
| 13 | 2.2 | **excavation supporting** | 92d | 2019-06-05 | 2019-09-04 |  | 0d |  |
| 14 | 2.2.1 | king post (150 piece) | 17d | 2019-06-05 | 2019-06-21 | 11 | 0d |  |
| 15 | 2.2.2 | knock off broken pavement ＆ poor quality diaphragm wall | 7d | 2019-06-22 | 2019-06-28 | 14 | 0d |  |
| 16 | 2.2.3 | 1st phase earthwork excavation(11460m3) | 15d | 2019-06-29 | 2019-07-13 | 15 | 0d |  |
| 17 | 2.2.4 | working platform & 1st phase horizontal bracing (4731m2) | 7d | 2019-07-14 | 2019-07-20 | 16 | 0d |  |
| 18 | 2.2.5 | 2nd phase earthwork excavation(17838m3) | 23d | 2019-07-21 | 2019-08-12 | 17 | 0d |  |
| 19 | 2.2.6 | 1st phase horizontal bracing (4731m2) | 7d | 2019-08-13 | 2019-08-19 | 18 | 0d |  |
| 20 | 2.2.7 | 3rd phase earthwork excavation(10543m3) | 16d | 2019-08-20 | 2019-09-04 | 19 | 0d |  |
| 21 | 3 | **Structure** | 30d | 2019-09-05 | 2019-10-04 |  | 0d | 240h |
| 22 | 3.1 | grounding system | 3d | 2019-09-05 | 2019-09-07 | 20 | 0d | 24h |
| 23 | 3.2 | grading & PC | 2d | 2019-09-08 | 2019-09-09 | 22 | 0d | 16h |
| 24 | 3.3 | **Slab** | 14d | 2019-09-10 | 2019-09-23 |  | 0d | 112h |
| 25 | 3.3.1 | slab: assembling reinforcement steel+B96 | 10d | 2019-09-10 | 2019-09-19 | 23 | 0d |  |
| 26 | 3.3.2 | slab: placement | 3d | 2019-09-20 | 2019-09-22 | 25 | 0d | 24h |
| 27 | 3.3.3 | confirm CSD&SEM drawings | 1d | 2019-09-23 | 2019-09-23 | 26 | 0d |  |

| ID | WBS | Task | Duration | Start | Finish | Predecessors | Total slack | Work |
| --- | --- | --- | --- | --- | --- | --- | --- | --- |
| 28 | 3.4 | **Ground beam** | 12d | 2019-09-23 | 2019-10-04 |  | 0d | 96h |
| 29 | 3.4.1 | ground beam: assembling reinforcement steel | 3d | 2019-09-23 | 2019-09-25 | 106SS | 0d |  |
| 30 | 3.4.2 | ground beam: formwork | 7d | 2019-09-26 | 2019-10-02 | 29 | 0d |  |
| 31 | 3.4.3 | ground beam: placement | 2d | 2019-10-03 | 2019-10-04 | 30 | 0d | 16h |
| 32 | 4 | **B2F concrete placement** | 26d | 2019-10-05 | 2019-10-30 |  | 0d |  |
| 33 | 4.1 | raft foundation backfill | 2d | 2019-10-05 | 2019-10-06 | 31 | 0d |  |
| 34 | 4.2 | B2FL formwork | 7d | 2019-10-07 | 2019-10-13 | 33 | 0d |  |
| 35 | 4.3 | B2FL slab: assembling rebar | 7d | 2019-10-14 | 2019-10-20 | 34 | 0d |  |
| 36 | 4.4 | B2FL slab: utilities & clean | 2d | 2019-10-21 | 2019-10-22 | 35 | 0d |  |
| 37 | 4.5 | B2FL slab: placement | 8d | 2019-10-23 | 2019-10-30 | 36 | 0d | 64h |
| 38 | 5 | **B1F slab** | 145d | 2019-11-18 | 2020-04-10 |  | 0d |  |
| 39 | 5.1 | B2F Column: couple & assemble rebar | 8d | 2019-11-18 | 2019-11-25 | 37FS+18d | 0d | 64h |
| 40 | 5.2 | B2F formwork | 23d | 2020-02-26 | 2020-03-19 | 39, 45 | 0d |  |
| 41 | 5.3 | B1F slab: assembling reinforcement steel | 10d | 2020-03-20 | 2020-03-29 | 40 | 0d |  |
| 42 | 5.4 | B1F slab: utilities & clean | 5d | 2020-03-30 | 2020-04-03 | 41 | 0d |  |
| 43 | 5.5 | B1F slab: placement | 3d | 2020-04-06 | 2020-04-08 | 42FS+2d | 0d | 24h |
| 44 | 5.6 | curing & layout | 2d | 2020-04-09 | 2020-04-10 | 43 | 0d |  |
| 45 | 5.7 | Delay | 92d | 2019-11-26 | 2020-02-25 | 39 | 0d |  |
| 46 | 6 | **1F slab** | 344d | 2020-04-11 | 2021-03-20 |  | 0d |  |
| 47 | 6.1 | B1F structure outside of working platform | 104d | 2020-08-25 | 2020-12-06 | 55, 44 | 0d |  |
| 48 | 6.2 | 1F add steel structure bracing | 7d | 2020-12-07 | 2020-12-13 | 47 | 0d | 56h |
| 49 | 6.3 | decompression and removal of falsework of steel structure | 4d | 2020-12-14 | 2020-12-17 | 48 | 0d |  |
| 50 | 6.4 | B1F Column: couple & assemble rebar | 7d | 2021-01-02 | 2021-01-08 | 49FS+15d | 0d | 56h |
| 51 | 6.5 | B1FL formwork | 45d | 2021-01-09 | 2021-02-22 | 50 | 0d |  |
| 52 | 6.6 | 1FL slab: assembling reinforcement steel | 16d | 2021-02-23 | 2021-03-10 | 51 | 0d |  |
| 53 | 6.7 | 1FL slab: utilities & clean | 7d | 2021-03-11 | 2021-03-17 | 52 | 0d |  |
| 54 | 6.8 | 1FL slab: placement | 3d | 2021-03-18 | 2021-03-20 | 53 | 0d | 24h |
| 55 | 6.9 | Delay | 136d | 2020-04-11 | 2020-08-24 | 44 | 0d |  |

| ID | WBS | Task | Duration | Start | Finish | Predecessors | Total slack | Work |
| --- | --- | --- | --- | --- | --- | --- | --- | --- |
| 56 | 7 | **2F slab** | 61d | 2021-03-21 | 2021-05-20 |  | 0d |  |
| 57 | 7.1 | curing & layout | 3d | 2021-03-21 | 2021-03-23 | 54 | 0d |  |
| 58 | 7.2 | 1F Column: couple & assemble rebar | 7d | 2021-03-24 | 2021-03-30 | 57 | 0d | 56h |
| 59 | 7.3 | 1FL formwork | 19d | 2021-03-31 | 2021-04-18 | 58 | 0d |  |
| 60 | 7.4 | 2FL slab: assembling reinforcement steel | 8d | 2021-04-19 | 2021-04-26 | 59 | 0d |  |
| 61 | 7.5 | 2FL slab: utilities & clean | 3d | 2021-04-27 | 2021-04-29 | 60 | 0d |  |
| 62 | 7.6 | 2FL slab: placement | 5d | 2021-04-30 | 2021-05-04 | 61 | 0d | 40h |
| 63 | 7.7 | 2F slab: upper DECK | 16d | 2021-05-05 | 2021-05-20 | 62 | 0d |  |
| 64 | 8 | **3F slab** | 41d | 2021-05-22 | 2021-07-01 |  | 0d |  |
| 65 | 8.1 | curing & layout | 3d | 2021-05-22 | 2021-05-24 | 63FS+1d | 0d |  |
| 66 | 8.2 | 2F Column: couple & assemble rebar | 7d | 2021-05-25 | 2021-05-31 | 65 | 0d | 56h |
| 67 | 8.3 | 2FL formwork | 17d | 2021-06-01 | 2021-06-17 | 66 | 0d |  |
| 68 | 8.4 | 3FL slab: assembling reinforcement steel | 8d | 2021-06-18 | 2021-06-25 | 67 | 0d |  |
| 69 | 8.5 | 3FL slab: utilities & clean | 3d | 2021-06-26 | 2021-06-28 | 68 | 0d |  |
| 70 | 8.6 | 3FL slab: placement | 3d | 2021-06-29 | 2021-07-01 | 69 | 0d | 24h |
| 71 | 9 | **4F slab** | 45d | 2021-07-02 | 2021-08-15 |  | 0d |  |
| 72 | 9.1 | curing & layout | 3d | 2021-07-02 | 2021-07-04 | 70 | 0d |  |
| 73 | 9.2 | 3F Column: couple & assemble rebar | 8d | 2021-07-05 | 2021-07-12 | 72 | 0d | 64h |
| 74 | 9.3 | 4FL formwork | 20d | 2021-07-13 | 2021-08-01 | 73 | 0d |  |
| 75 | 9.4 | 4FL slab: assembling reinforcement steel | 8d | 2021-08-02 | 2021-08-09 | 74 | 0d |  |
| 76 | 9.5 | 4FL utilities & clean | 3d | 2021-08-10 | 2021-08-12 | 75 | 0d |  |
| 77 | 9.6 | 4FL slab: placement | 3d | 2021-08-13 | 2021-08-15 | 76 | 0d | 24h |
| 78 | 10 | **5F slab** | 46d | 2021-08-16 | 2021-09-30 |  | 0d |  |
| 79 | 10.1 | curing & layout | 3d | 2021-08-16 | 2021-08-18 | 77 | 0d |  |
| 80 | 10.2 | 4F Column: couple & assemble rebar | 9d | 2021-08-19 | 2021-08-27 | 79 | 0d | 72h |
| 81 | 10.3 | 5FL formwork | 20d | 2021-08-28 | 2021-09-16 | 80 | 0d |  |
| 82 | 10.4 | 5FL slab: assembling reinforcement steel | 9d | 2021-09-17 | 2021-09-25 | 81 | 0d |  |
| 83 | 10.5 | 5FL slab: utilities & clean | 3d | 2021-09-26 | 2021-09-28 | 82 | 0d |  |
| 84 | 10.6 | 5FL slab: placement | 2d | 2021-09-29 | 2021-09-30 | 83 | 0d | 16h |

| ID | WBS | Task | Duration | Start | Finish | Predecessors | Total slack | Work |
| --- | --- | --- | --- | --- | --- | --- | --- | --- |
| 85 | 11 | **6F slab** | 31d | 2021-10-01 | 2021-10-31 |  | 0d |  |
| 86 | 11.1 | curing & layout | 2d | 2021-10-01 | 2021-10-02 | 84 | 0d |  |
| 87 | 11.2 | 5F Column: couple & assemble rebar | 6d | 2021-10-03 | 2021-10-08 | 86 | 0d | 48h |
| 88 | 11.3 | 6FL formwork | 15d | 2021-10-09 | 2021-10-23 | 87 | 0d |  |
| 89 | 11.4 | 6FL slab: assembling reinforcement steel | 5d | 2021-10-24 | 2021-10-28 | 88 | 0d |  |
| 90 | 11.5 | 6FL slab: utilities & clean | 1d | 2021-10-29 | 2021-10-29 | 89 | 0d |  |
| 91 | 11.6 | 6FL slab: placement | 2d | 2021-10-30 | 2021-10-31 | 90 | 0d | 16h |
| 92 | 12 | **PRF slab** | 26d | 2021-11-01 | 2021-11-26 |  | 0d |  |
| 93 | 12.1 | curing & layout | 2d | 2021-11-01 | 2021-11-02 | 91 | 0d |  |
| 94 | 12.2 | 6F Column: couple & assemble rebar | 6d | 2021-11-03 | 2021-11-08 | 93 | 0d | 48h |
| 95 | 12.3 | PR1FL formwork | 10d | 2021-11-09 | 2021-11-18 | 94 | 0d |  |
| 96 | 12.4 | PR1FL slab: assembling reinforcement steel | 5d | 2021-11-19 | 2021-11-23 | 95 | 0d |  |
| 97 | 12.5 | PR1FL slab: utilities & clean | 1d | 2021-11-24 | 2021-11-24 | 96 | 0d |  |
| 98 | 12.6 | PR1FL slab: placement | 2d | 2021-11-25 | 2021-11-26 | 97 | 0d | 16h |
| 99 | 13 | **RF slab & delayed pour strip** | 71d | 2021-11-27 | 2022-02-05 |  | 0d |  |
| 100 | 13.1 | R1 slab: curing & layout | 7d | 2021-11-27 | 2021-12-03 | 98 | 0d | 56h |
| 101 | 13.2 | removal of falsework of steel structure | 4d | 2021-12-04 | 2021-12-07 | 100 | 0d |  |
| 102 | 13.3 | B2 hallway doublelayer board & steel ladder | 35d | 2021-12-08 | 2022-01-11 | 101 | 0d |  |
| 103 | 13.4 | modify scaffold | 4d | 2022-01-12 | 2022-01-15 | 102 | 0d |  |
| 104 | 13.5 | delayed pour strip placement & 5F slab | 21d | 2022-01-16 | 2022-02-05 | 103 | 0d |  |
| 105 | 14 | **Steel Structure** | 887d | 2019-09-23 | 2022-02-25 |  | 0d |  |
| 106 | 14.1 | Section A basic bolt installation(19 piece) | 3d | 2019-09-23 | 2019-09-25 | 26 | 0d |  |
| 107 | 14.2 | Section B basic bolt installation(16 piece) | 3d | 2019-10-31 | 2019-11-02 | 37 | 0d |  |
| 108 | 14.3 | 1st section of Tower building: hoisting pillars | 15d | 2019-11-03 | 2019-11-17 | 107 | 0d |  |
| 109 | 14.4 | renovation of fence on the north side & working platform clearance | 13d | 2020-06-15 | 2020-06-27 | 117 | 0d |  |
| 110 | 14.5 | dismantle horizontal bracing & add diagonal bracing | 12d | 2020-06-28 | 2020-07-09 | 109 | 0d |  |
| 111 | 14.6 | 2nd section of Tower building: hoisting pillars | 25d | 2020-07-10 | 2020-08-03 | 108, 110 | 0d |  |
| 112 | 14.7 | 3rd section of Tower building: hoisting pillars | 25d | 2020-08-04 | 2020-08-28 | 111 | 0d |  |
| 113 | 14.8 | temporary lightning grounding measures | 2d | 2020-08-29 | 2020-08-30 | 112 | 0d |  |
| 114 | 14.9 | erection of truss bridge | 51d | 2020-08-29 | 2020-10-18 | 112 | 0d |  |
| 115 | 14.10 | dismantle working platform | 12d | 2020-12-20 | 2020-12-31 | 114FS+62d | 0d |  |
| 116 | 14.11 | 4F erection of hallway suspension | 10d | 2022-02-16 | 2022-02-25 | 115, 104FS+10d | 0d | 80h |
| 117 | 14.12 | Delay | 210d | 2019-11-18 | 2020-06-14 | 108 | 0d |  |

| ID | WBS | Task | Duration | Start | Finish | Predecessors | Total slack | Work |
| --- | --- | --- | --- | --- | --- | --- | --- | --- |
| 118 | 15 | **Extetior Decoration** | 467d | 2021-08-16 | 2022-11-25 |  | 0d |  |
| 119 | 15.1 | Exterior Wall Water Proof | 21d | 2021-10-01 | 2021-10-21 | 84 | 0d |  |
| 120 | 15.2 | brick | 165d | 2021-10-12 | 2022-03-25 | 119FS-10d | 0d |  |
| 121 | 15.3 | Exterior Curtain Wall | 182d | 2021-08-16 | 2022-02-13 | 84FS-46d | 0d | 1456h |
| 122 | 15.4 | GRC shading grating | 297d | 2021-12-04 | 2022-09-26 | 98FS+7d | 0d |  |
| 123 | 15.5 | baking paint the metal grating M7a,M7b | 60d | 2022-09-27 | 2022-11-25 | 122 | 0d |  |
| 124 | 15.6 | dismantling scaffold | 12d | 2022-03-26 | 2022-04-06 | 121, 120 | 0d |  |
| 125 | 15.7 | water proof courtyard | 20d | 2022-03-26 | 2022-04-14 | 120, 124SS | 0d |  |
| 126 | 15.8 | pipe excavation | 20d | 2022-04-15 | 2022-05-04 | 125 | 0d |  |
| 127 | 15.9 | Pavement | 30d | 2022-05-05 | 2022-06-03 | 126 | 0d |  |
| 128 | 15.10 | Miscellaneous construction (tree & | 18d | 2022-05-05 | 2022-05-22 | 127SS | 0d |  |
| 129 | 15.11 | Fire inspection | 30d | 2022-05-07 | 2022-06-05 | 128SS+2d | 0d |  |
| 130 | 15.12 | License application | 45d | 2022-05-14 | 2022-06-27 | 129SS+7d | 0d |  |
| 131 | 16 | **Intetior Decoration** | 211d | 2021-10-01 | 2022-04-29 |  | 0d |  |
| 132 | 16.1 | Intetior Decoration | 211d | 2021-10-01 | 2022-04-29 | 84 | 0d |  |
| 133 | 17 | **Windows and Doors** | 180d | 2021-11-27 | 2022-05-25 |  | 0d | 1440h |
| 134 | 17.1 | aluminum window | 180d | 2021-11-27 | 2022-05-25 | 61SS, 98 | 0d |  |
| 135 | 17.2 | fire door | 180d | 2021-11-27 | 2022-05-25 | 134SS | 0d |  |
